project_id,version_id,task_id,task_name,start,finish,duration,as_of_date,source_activity,source_version,original_start,original_finish,anchor,start_shift_days,finish_shift_days,representation,policy
SYN-BLD-001,SYN-BLD-001-V0,SYN-BLD-001-T001,Foundations and core base — zone A,2025-04-07,2025-04-10,4,2025-04-07,"{""actual_duration_days_synthetic"": 6, ""actual_finish_synthetic"": ""2025-04-12"", ""actual_start_synthetic"": ""2025-04-07"", ""crew_size_synthetic"": 4, ""delay_days_synthetic"": 2, ""planned_duration_days"": 4, ""planned_finish"": ""2025-04-10"", ""planned_start"": ""2025-04-07"", ""project_id"": ""SYN-BLD-001"", ""resource_type"": ""General contractor crew"", ""synthetic_flag"": ""TRUE"", ""task_id"": ""SYN-BLD-001-T001"", ""task_name"": ""Foundations and core base \u2014 zone A"", ""wbs_code"": ""01.01"", ""work_package"": ""Substructure""}","{""as_of_date"": ""2025-04-07"", ""planned_duration_days_in_version"": 4, ""planned_finish_in_version"": ""2025-04-10"", ""planned_start_in_version"": ""2025-04-07"", ""project_id"": ""SYN-BLD-001"", ""revision_reason_synthetic"": ""Original synthetic baseline"", ""synthetic_flag"": ""TRUE"", ""task_id"": ""SYN-BLD-001-T001"", ""version_id"": ""SYN-BLD-001-V0"", ""version_name"": ""baseline""}",2025-04-07,2025-04-10,2025-04-07,0,0,derived_synthetic_computed,reconciliation-v1
SYN-BLD-001,SYN-BLD-001-V0,SYN-BLD-001-T002,Foundations and core base — zone B,2025-04-11,2025-04-14,4,2025-04-07,"{""actual_duration_days_synthetic"": 2, ""actual_finish_synthetic"": ""2025-04-13"", ""actual_start_synthetic"": ""2025-04-12"", ""crew_size_synthetic"": 4, ""delay_days_synthetic"": -2, ""planned_duration_days"": 4, ""planned_finish"": ""2025-04-15"", ""planned_start"": ""2025-04-12"", ""project_id"": ""SYN-BLD-001"", ""resource_type"": ""General contractor crew"", ""synthetic_flag"": ""TRUE"", ""task_id"": ""SYN-BLD-001-T002"", ""task_name"": ""Foundations and core base \u2014 zone B"", ""wbs_code"": ""01.02"", ""work_package"": ""Substructure""}","{""as_of_date"": ""2025-04-07"", ""planned_duration_days_in_version"": 4, ""planned_finish_in_version"": ""2025-04-15"", ""planned_start_in_version"": ""2025-04-12"", ""project_id"": ""SYN-BLD-001"", ""revision_reason_synthetic"": ""Original synthetic baseline"", ""synthetic_flag"": ""TRUE"", ""task_id"": ""SYN-BLD-001-T002"", ""version_id"": ""SYN-BLD-001-V0"", ""version_name"": ""baseline""}",2025-04-12,2025-04-15,2025-04-07,-1,-1,derived_synthetic_computed,reconciliation-v1
SYN-BLD-001,SYN-BLD-001-V0,SYN-BLD-001-T003,Foundations and core base — zone C,2025-04-15,2025-04-18,4,2025-04-07,"{""actual_duration_days_synthetic"": 3, ""actual_finish_synthetic"": ""2025-04-19"", ""actual_start_synthetic"": ""2025-04-17"", ""crew_size_synthetic"": 5, ""delay_days_synthetic"": -1, ""planned_duration_days"": 4, ""planned_finish"": ""2025-04-20"", ""planned_start"": ""2025-04-17"", ""project_id"": ""SYN-BLD-001"", ""resource_type"": ""General contractor crew"", ""synthetic_flag"": ""TRUE"", ""task_id"": ""SYN-BLD-001-T003"", ""task_name"": ""Foundations and core base \u2014 zone C"", ""wbs_code"": ""01.03"", ""work_package"": ""Substructure""}","{""as_of_date"": ""2025-04-07"", ""planned_duration_days_in_version"": 4, ""planned_finish_in_version"": ""2025-04-20"", ""planned_start_in_version"": ""2025-04-17"", ""project_id"": ""SYN-BLD-001"", ""revision_reason_synthetic"": ""Original synthetic baseline"", ""synthetic_flag"": ""TRUE"", ""task_id"": ""SYN-BLD-001-T003"", ""version_id"": ""SYN-BLD-001-V0"", ""version_name"": ""baseline""}",2025-04-17,2025-04-20,2025-04-07,-2,-2,derived_synthetic_computed,reconciliation-v1
SYN-BLD-001,SYN-BLD-001-V0,SYN-BLD-001-T004,Concrete frame — zone A,2025-04-19,2025-04-24,6,2025-04-07,"{""actual_duration_days_synthetic"": 7, ""actual_finish_synthetic"": ""2025-04-30"", ""actual_start_synthetic"": ""2025-04-24"", ""crew_size_synthetic"": 5, ""delay_days_synthetic"": 1, ""planned_duration_days"": 6, ""planned_finish"": ""2025-04-29"", ""planned_start"": ""2025-04-24"", ""project_id"": ""SYN-BLD-001"", ""resource_type"": ""Concrete crew"", ""synthetic_flag"": ""TRUE"", ""task_id"": ""SYN-BLD-001-T004"", ""task_name"": ""Concrete frame \u2014 zone A"", ""wbs_code"": ""02.01"", ""work_package"": ""Structure""}","{""as_of_date"": ""2025-04-07"", ""planned_duration_days_in_version"": 6, ""planned_finish_in_version"": ""2025-04-29"", ""planned_start_in_version"": ""2025-04-24"", ""project_id"": ""SYN-BLD-001"", ""revision_reason_synthetic"": ""Original synthetic baseline"", ""synthetic_flag"": ""TRUE"", ""task_id"": ""SYN-BLD-001-T004"", ""version_id"": ""SYN-BLD-001-V0"", ""version_name"": ""baseline""}",2025-04-24,2025-04-29,2025-04-07,-5,-5,derived_synthetic_computed,reconciliation-v1
SYN-BLD-001,SYN-BLD-001-V0,SYN-BLD-001-T005,Concrete frame — zone B,2025-04-25,2025-04-30,6,2025-04-07,"{""actual_duration_days_synthetic"": 9, ""actual_finish_synthetic"": ""2025-05-07"", ""actual_start_synthetic"": ""2025-04-29"", ""crew_size_synthetic"": 5, ""delay_days_synthetic"": 3, ""planned_duration_days"": 6, ""planned_finish"": ""2025-05-04"", ""planned_start"": ""2025-04-29"", ""project_id"": ""SYN-BLD-001"", ""resource_type"": ""Concrete crew"", ""synthetic_flag"": ""TRUE"", ""task_id"": ""SYN-BLD-001-T005"", ""task_name"": ""Concrete frame \u2014 zone B"", ""wbs_code"": ""02.02"", ""work_package"": ""Structure""}","{""as_of_date"": ""2025-04-07"", ""planned_duration_days_in_version"": 6, ""planned_finish_in_version"": ""2025-05-04"", ""planned_start_in_version"": ""2025-04-29"", ""project_id"": ""SYN-BLD-001"", ""revision_reason_synthetic"": ""Original synthetic baseline"", ""synthetic_flag"": ""TRUE"", ""task_id"": ""SYN-BLD-001-T005"", ""version_id"": ""SYN-BLD-001-V0"", ""version_name"": ""baseline""}",2025-04-29,2025-05-04,2025-04-07,-4,-4,derived_synthetic_computed,reconciliation-v1
SYN-BLD-001,SYN-BLD-001-V0,SYN-BLD-001-T006,Concrete frame — zone C,2025-05-01,2025-05-06,6,2025-04-07,"{""actual_duration_days_synthetic"": 4, ""actual_finish_synthetic"": ""2025-05-08"", ""actual_start_synthetic"": ""2025-05-05"", ""crew_size_synthetic"": 6, ""delay_days_synthetic"": -1, ""planned_duration_days"": 6, ""planned_finish"": ""2025-05-09"", ""planned_start"": ""2025-05-04"", ""project_id"": ""SYN-BLD-001"", ""resource_type"": ""Concrete crew"", ""synthetic_flag"": ""TRUE"", ""task_id"": ""SYN-BLD-001-T006"", ""task_name"": ""Concrete frame \u2014 zone C"", ""wbs_code"": ""02.03"", ""work_package"": ""Structure""}","{""as_of_date"": ""2025-04-07"", ""planned_duration_days_in_version"": 6, ""planned_finish_in_version"": ""2025-05-09"", ""planned_start_in_version"": ""2025-05-04"", ""project_id"": ""SYN-BLD-001"", ""revision_reason_synthetic"": ""Original synthetic baseline"", ""synthetic_flag"": ""TRUE"", ""task_id"": ""SYN-BLD-001-T006"", ""version_id"": ""SYN-BLD-001-V0"", ""version_name"": ""baseline""}",2025-05-04,2025-05-09,2025-04-07,-3,-3,derived_synthetic_computed,reconciliation-v1
SYN-BLD-001,SYN-BLD-001-V0,SYN-BLD-001-T007,Concrete frame — zone D,2025-05-07,2025-05-12,6,2025-04-07,"{""actual_duration_days_synthetic"": 6, ""actual_finish_synthetic"": ""2025-05-15"", ""actual_start_synthetic"": ""2025-05-10"", ""crew_size_synthetic"": 6, ""delay_days_synthetic"": 1, ""planned_duration_days"": 6, ""planned_finish"": ""2025-05-14"", ""planned_start"": ""2025-05-09"", ""project_id"": ""SYN-BLD-001"", ""resource_type"": ""Concrete crew"", ""synthetic_flag"": ""TRUE"", ""task_id"": ""SYN-BLD-001-T007"", ""task_name"": ""Concrete frame \u2014 zone D"", ""wbs_code"": ""02.04"", ""work_package"": ""Structure""}","{""as_of_date"": ""2025-04-07"", ""planned_duration_days_in_version"": 6, ""planned_finish_in_version"": ""2025-05-14"", ""planned_start_in_version"": ""2025-05-09"", ""project_id"": ""SYN-BLD-001"", ""revision_reason_synthetic"": ""Original synthetic baseline"", ""synthetic_flag"": ""TRUE"", ""task_id"": ""SYN-BLD-001-T007"", ""version_id"": ""SYN-BLD-001-V0"", ""version_name"": ""baseline""}",2025-05-09,2025-05-14,2025-04-07,-2,-2,derived_synthetic_computed,reconciliation-v1
SYN-BLD-001,SYN-BLD-001-V0,SYN-BLD-001-T008,Floor slabs — zone A,2025-05-13,2025-05-18,6,2025-04-07,"{""actual_duration_days_synthetic"": 8, ""actual_finish_synthetic"": ""2025-05-24"", ""actual_start_synthetic"": ""2025-05-17"", ""crew_size_synthetic"": 6, ""delay_days_synthetic"": 3, ""planned_duration_days"": 6, ""planned_finish"": ""2025-05-21"", ""planned_start"": ""2025-05-16"", ""project_id"": ""SYN-BLD-001"", ""resource_type"": ""Concrete crew"", ""synthetic_flag"": ""TRUE"", ""task_id"": ""SYN-BLD-001-T008"", ""task_name"": ""Floor slabs \u2014 zone A"", ""wbs_code"": ""03.01"", ""work_package"": ""Structure""}","{""as_of_date"": ""2025-04-07"", ""planned_duration_days_in_version"": 6, ""planned_finish_in_version"": ""2025-05-21"", ""planned_start_in_version"": ""2025-05-16"", ""project_id"": ""SYN-BLD-001"", ""revision_reason_synthetic"": ""Original synthetic baseline"", ""synthetic_flag"": ""TRUE"", ""task_id"": ""SYN-BLD-001-T008"", ""version_id"": ""SYN-BLD-001-V0"", ""version_name"": ""baseline""}",2025-05-16,2025-05-21,2025-04-07,-3,-3,derived_synthetic_computed,reconciliation-v1
SYN-BLD-001,SYN-BLD-001-V0,SYN-BLD-001-T009,Floor slabs — zone B,2025-05-19,2025-05-24,6,2025-04-07,"{""actual_duration_days_synthetic"": 9, ""actual_finish_synthetic"": ""2025-05-30"", ""actual_start_synthetic"": ""2025-05-22"", ""crew_size_synthetic"": 7, ""delay_days_synthetic"": 4, ""planned_duration_days"": 6, ""planned_finish"": ""2025-05-26"", ""planned_start"": ""2025-05-21"", ""project_id"": ""SYN-BLD-001"", ""resource_type"": ""Concrete crew"", ""synthetic_flag"": ""TRUE"", ""task_id"": ""SYN-BLD-001-T009"", ""task_name"": ""Floor slabs \u2014 zone B"", ""wbs_code"": ""03.02"", ""work_package"": ""Structure""}","{""as_of_date"": ""2025-04-07"", ""planned_duration_days_in_version"": 6, ""planned_finish_in_version"": ""2025-05-26"", ""planned_start_in_version"": ""2025-05-21"", ""project_id"": ""SYN-BLD-001"", ""revision_reason_synthetic"": ""Original synthetic baseline"", ""synthetic_flag"": ""TRUE"", ""task_id"": ""SYN-BLD-001-T009"", ""version_id"": ""SYN-BLD-001-V0"", ""version_name"": ""baseline""}",2025-05-21,2025-05-26,2025-04-07,-2,-2,derived_synthetic_computed,reconciliation-v1
SYN-BLD-001,SYN-BLD-001-V0,SYN-BLD-001-T010,Floor slabs — zone C,2025-05-25,2025-05-30,6,2025-04-07,"{""actual_duration_days_synthetic"": 5, ""actual_finish_synthetic"": ""2025-05-31"", ""actual_start_synthetic"": ""2025-05-27"", ""crew_size_synthetic"": 7, ""delay_days_synthetic"": 0, ""planned_duration_days"": 6, ""planned_finish"": ""2025-05-31"", ""planned_start"": ""2025-05-26"", ""project_id"": ""SYN-BLD-001"", ""resource_type"": ""Concrete crew"", ""synthetic_flag"": ""TRUE"", ""task_id"": ""SYN-BLD-001-T010"", ""task_name"": ""Floor slabs \u2014 zone C"", ""wbs_code"": ""03.03"", ""work_package"": ""Structure""}","{""as_of_date"": ""2025-04-07"", ""planned_duration_days_in_version"": 6, ""planned_finish_in_version"": ""2025-05-31"", ""planned_start_in_version"": ""2025-05-26"", ""project_id"": ""SYN-BLD-001"", ""revision_reason_synthetic"": ""Original synthetic baseline"", ""synthetic_flag"": ""TRUE"", ""task_id"": ""SYN-BLD-001-T010"", ""version_id"": ""SYN-BLD-001-V0"", ""version_name"": ""baseline""}",2025-05-26,2025-05-31,2025-04-07,-1,-1,derived_synthetic_computed,reconciliation-v1
SYN-BLD-001,SYN-BLD-001-V0,SYN-BLD-001-T011,Floor slabs — zone D,2025-05-31,2025-06-05,6,2025-04-07,"{""actual_duration_days_synthetic"": 7, ""actual_finish_synthetic"": ""2025-06-07"", ""actual_start_synthetic"": ""2025-06-01"", ""crew_size_synthetic"": 7, ""delay_days_synthetic"": 2, ""planned_duration_days"": 6, ""planned_finish"": ""2025-06-05"", ""planned_start"": ""2025-05-31"", ""project_id"": ""SYN-BLD-001"", ""resource_type"": ""Concrete crew"", ""synthetic_flag"": ""TRUE"", ""task_id"": ""SYN-BLD-001-T011"", ""task_name"": ""Floor slabs \u2014 zone D"", ""wbs_code"": ""03.04"", ""work_package"": ""Structure""}","{""as_of_date"": ""2025-04-07"", ""planned_duration_days_in_version"": 6, ""planned_finish_in_version"": ""2025-06-05"", ""planned_start_in_version"": ""2025-05-31"", ""project_id"": ""SYN-BLD-001"", ""revision_reason_synthetic"": ""Original synthetic baseline"", ""synthetic_flag"": ""TRUE"", ""task_id"": ""SYN-BLD-001-T011"", ""version_id"": ""SYN-BLD-001-V0"", ""version_name"": ""baseline""}",2025-05-31,2025-06-05,2025-04-07,0,0,derived_synthetic_computed,reconciliation-v1
SYN-BLD-001,SYN-BLD-001-V0,SYN-BLD-001-T012,Floor slabs — zone E,2025-06-06,2025-06-11,6,2025-04-07,"{""actual_duration_days_synthetic"": 8, ""actual_finish_synthetic"": ""2025-06-11"", ""actual_start_synthetic"": ""2025-06-04"", ""crew_size_synthetic"": 8, ""delay_days_synthetic"": 1, ""planned_duration_days"": 6, ""planned_finish"": ""2025-06-10"", ""planned_start"": ""2025-06-05"", ""project_id"": ""SYN-BLD-001"", ""resource_type"": ""Concrete crew"", ""synthetic_flag"": ""TRUE"", ""task_id"": ""SYN-BLD-001-T012"", ""task_name"": ""Floor slabs \u2014 zone E"", ""wbs_code"": ""03.05"", ""work_package"": ""Structure""}","{""as_of_date"": ""2025-04-07"", ""planned_duration_days_in_version"": 6, ""planned_finish_in_version"": ""2025-06-10"", ""planned_start_in_version"": ""2025-06-05"", ""project_id"": ""SYN-BLD-001"", ""revision_reason_synthetic"": ""Original synthetic baseline"", ""synthetic_flag"": ""TRUE"", ""task_id"": ""SYN-BLD-001-T012"", ""version_id"": ""SYN-BLD-001-V0"", ""version_name"": ""baseline""}",2025-06-05,2025-06-10,2025-04-07,1,1,derived_synthetic_computed,reconciliation-v1
SYN-BLD-001,SYN-BLD-001-V0,SYN-BLD-001-T013,Facade and glazing — zone A,2025-06-12,2025-06-16,5,2025-04-07,"{""actual_duration_days_synthetic"": 3, ""actual_finish_synthetic"": ""2025-06-13"", ""actual_start_synthetic"": ""2025-06-11"", ""crew_size_synthetic"": 8, ""delay_days_synthetic"": -3, ""planned_duration_days"": 5, ""planned_finish"": ""2025-06-16"", ""planned_start"": ""2025-06-12"", ""project_id"": ""SYN-BLD-001"", ""resource_type"": ""General contractor crew"", ""synthetic_flag"": ""TRUE"", ""task_id"": ""SYN-BLD-001-T013"", ""task_name"": ""Facade and glazing \u2014 zone A"", ""wbs_code"": ""04.01"", ""work_package"": ""Envelope""}","{""as_of_date"": ""2025-04-07"", ""planned_duration_days_in_version"": 5, ""planned_finish_in_version"": ""2025-06-16"", ""planned_start_in_version"": ""2025-06-12"", ""project_id"": ""SYN-BLD-001"", ""revision_reason_synthetic"": ""Original synthetic baseline"", ""synthetic_flag"": ""TRUE"", ""task_id"": ""SYN-BLD-001-T013"", ""version_id"": ""SYN-BLD-001-V0"", ""version_name"": ""baseline""}",2025-06-12,2025-06-16,2025-04-07,0,0,derived_synthetic_computed,reconciliation-v1
SYN-BLD-001,SYN-BLD-001-V0,SYN-BLD-001-T014,Facade and glazing — zone B,2025-06-17,2025-06-22,6,2025-04-07,"{""actual_duration_days_synthetic"": 6, ""actual_finish_synthetic"": ""2025-06-21"", ""actual_start_synthetic"": ""2025-06-16"", ""crew_size_synthetic"": 8, ""delay_days_synthetic"": -1, ""planned_duration_days"": 6, ""planned_finish"": ""2025-06-22"", ""planned_start"": ""2025-06-17"", ""project_id"": ""SYN-BLD-001"", ""resource_type"": ""General contractor crew"", ""synthetic_flag"": ""TRUE"", ""task_id"": ""SYN-BLD-001-T014"", ""task_name"": ""Facade and glazing \u2014 zone B"", ""wbs_code"": ""04.02"", ""work_package"": ""Envelope""}","{""as_of_date"": ""2025-04-07"", ""planned_duration_days_in_version"": 6, ""planned_finish_in_version"": ""2025-06-22"", ""planned_start_in_version"": ""2025-06-17"", ""project_id"": ""SYN-BLD-001"", ""revision_reason_synthetic"": ""Original synthetic baseline"", ""synthetic_flag"": ""TRUE"", ""task_id"": ""SYN-BLD-001-T014"", ""version_id"": ""SYN-BLD-001-V0"", ""version_name"": ""baseline""}",2025-06-17,2025-06-22,2025-04-07,0,0,derived_synthetic_computed,reconciliation-v1
SYN-BLD-001,SYN-BLD-001-V0,SYN-BLD-001-T015,Facade and glazing — zone C,2025-06-23,2025-06-28,6,2025-04-07,"{""actual_duration_days_synthetic"": 7, ""actual_finish_synthetic"": ""2025-06-27"", ""actual_start_synthetic"": ""2025-06-21"", ""crew_size_synthetic"": 9, ""delay_days_synthetic"": 0, ""planned_duration_days"": 6, ""planned_finish"": ""2025-06-27"", ""planned_start"": ""2025-06-22"", ""project_id"": ""SYN-BLD-001"", ""resource_type"": ""General contractor crew"", ""synthetic_flag"": ""TRUE"", ""task_id"": ""SYN-BLD-001-T015"", ""task_name"": ""Facade and glazing \u2014 zone C"", ""wbs_code"": ""04.03"", ""work_package"": ""Envelope""}","{""as_of_date"": ""2025-04-07"", ""planned_duration_days_in_version"": 6, ""planned_finish_in_version"": ""2025-06-27"", ""planned_start_in_version"": ""2025-06-22"", ""project_id"": ""SYN-BLD-001"", ""revision_reason_synthetic"": ""Original synthetic baseline"", ""synthetic_flag"": ""TRUE"", ""task_id"": ""SYN-BLD-001-T015"", ""version_id"": ""SYN-BLD-001-V0"", ""version_name"": ""baseline""}",2025-06-22,2025-06-27,2025-04-07,1,1,derived_synthetic_computed,reconciliation-v1
SYN-BLD-001,SYN-BLD-001-V0,SYN-BLD-001-T016,Facade and glazing — zone D,2025-06-29,2025-07-04,6,2025-04-07,"{""actual_duration_days_synthetic"": 9, ""actual_finish_synthetic"": ""2025-07-04"", ""actual_start_synthetic"": ""2025-06-26"", ""crew_size_synthetic"": 9, ""delay_days_synthetic"": 2, ""planned_duration_days"": 6, ""planned_finish"": ""2025-07-02"", ""planned_start"": ""2025-06-27"", ""project_id"": ""SYN-BLD-001"", ""resource_type"": ""General contractor crew"", ""synthetic_flag"": ""TRUE"", ""task_id"": ""SYN-BLD-001-T016"", ""task_name"": ""Facade and glazing \u2014 zone D"", ""wbs_code"": ""04.04"", ""work_package"": ""Envelope""}","{""as_of_date"": ""2025-04-07"", ""planned_duration_days_in_version"": 6, ""planned_finish_in_version"": ""2025-07-02"", ""planned_start_in_version"": ""2025-06-27"", ""project_id"": ""SYN-BLD-001"", ""revision_reason_synthetic"": ""Original synthetic baseline"", ""synthetic_flag"": ""TRUE"", ""task_id"": ""SYN-BLD-001-T016"", ""version_id"": ""SYN-BLD-001-V0"", ""version_name"": ""baseline""}",2025-06-27,2025-07-02,2025-04-07,2,2,derived_synthetic_computed,reconciliation-v1
SYN-BLD-001,SYN-BLD-001-V0,SYN-BLD-001-T017,Mechanical and electrical rough-in — zone A,2025-07-05,2025-07-12,8,2025-04-07,"{""actual_duration_days_synthetic"": 7, ""actual_finish_synthetic"": ""2025-07-09"", ""actual_start_synthetic"": ""2025-07-03"", ""crew_size_synthetic"": 11, ""delay_days_synthetic"": -2, ""planned_duration_days"": 8, ""planned_finish"": ""2025-07-11"", ""planned_start"": ""2025-07-04"", ""project_id"": ""SYN-BLD-001"", ""resource_type"": ""MEP trade crew"", ""synthetic_flag"": ""TRUE"", ""task_id"": ""SYN-BLD-001-T017"", ""task_name"": ""Mechanical and electrical rough-in \u2014 zone A"", ""wbs_code"": ""05.01"", ""work_package"": ""MEP""}","{""as_of_date"": ""2025-04-07"", ""planned_duration_days_in_version"": 8, ""planned_finish_in_version"": ""2025-07-11"", ""planned_start_in_version"": ""2025-07-04"", ""project_id"": ""SYN-BLD-001"", ""revision_reason_synthetic"": ""Original synthetic baseline"", ""synthetic_flag"": ""TRUE"", ""task_id"": ""SYN-BLD-001-T017"", ""version_id"": ""SYN-BLD-001-V0"", ""version_name"": ""baseline""}",2025-07-04,2025-07-11,2025-04-07,1,1,derived_synthetic_computed,reconciliation-v1
SYN-BLD-001,SYN-BLD-001-V0,SYN-BLD-001-T018,Mechanical and electrical rough-in — zone B,2025-07-13,2025-07-20,8,2025-04-07,"{""actual_duration_days_synthetic"": 8, ""actual_finish_synthetic"": ""2025-07-15"", ""actual_start_synthetic"": ""2025-07-08"", ""crew_size_synthetic"": 11, ""delay_days_synthetic"": -1, ""planned_duration_days"": 8, ""planned_finish"": ""2025-07-16"", ""planned_start"": ""2025-07-09"", ""project_id"": ""SYN-BLD-001"", ""resource_type"": ""MEP trade crew"", ""synthetic_flag"": ""TRUE"", ""task_id"": ""SYN-BLD-001-T018"", ""task_name"": ""Mechanical and electrical rough-in \u2014 zone B"", ""wbs_code"": ""05.02"", ""work_package"": ""MEP""}","{""as_of_date"": ""2025-04-07"", ""planned_duration_days_in_version"": 8, ""planned_finish_in_version"": ""2025-07-16"", ""planned_start_in_version"": ""2025-07-09"", ""project_id"": ""SYN-BLD-001"", ""revision_reason_synthetic"": ""Original synthetic baseline"", ""synthetic_flag"": ""TRUE"", ""task_id"": ""SYN-BLD-001-T018"", ""version_id"": ""SYN-BLD-001-V0"", ""version_name"": ""baseline""}",2025-07-09,2025-07-16,2025-04-07,4,4,derived_synthetic_computed,reconciliation-v1
SYN-BLD-001,SYN-BLD-001-V0,SYN-BLD-001-T019,Mechanical and electrical rough-in — zone C,2025-07-21,2025-07-28,8,2025-04-07,"{""actual_duration_days_synthetic"": 10, ""actual_finish_synthetic"": ""2025-07-23"", ""actual_start_synthetic"": ""2025-07-14"", ""crew_size_synthetic"": 12, ""delay_days_synthetic"": 2, ""planned_duration_days"": 8, ""planned_finish"": ""2025-07-21"", ""planned_start"": ""2025-07-14"", ""project_id"": ""SYN-BLD-001"", ""resource_type"": ""MEP trade crew"", ""synthetic_flag"": ""TRUE"", ""task_id"": ""SYN-BLD-001-T019"", ""task_name"": ""Mechanical and electrical rough-in \u2014 zone C"", ""wbs_code"": ""05.03"", ""work_package"": ""MEP""}","{""as_of_date"": ""2025-04-07"", ""planned_duration_days_in_version"": 8, ""planned_finish_in_version"": ""2025-07-21"", ""planned_start_in_version"": ""2025-07-14"", ""project_id"": ""SYN-BLD-001"", ""revision_reason_synthetic"": ""Original synthetic baseline"", ""synthetic_flag"": ""TRUE"", ""task_id"": ""SYN-BLD-001-T019"", ""version_id"": ""SYN-BLD-001-V0"", ""version_name"": ""baseline""}",2025-07-14,2025-07-21,2025-04-07,7,7,derived_synthetic_computed,reconciliation-v1
SYN-BLD-001,SYN-BLD-001-V0,SYN-BLD-001-T020,Mechanical and electrical rough-in — zone D,2025-07-29,2025-08-05,8,2025-04-07,"{""actual_duration_days_synthetic"": 6, ""actual_finish_synthetic"": ""2025-07-24"", ""actual_start_synthetic"": ""2025-07-19"", ""crew_size_synthetic"": 12, ""delay_days_synthetic"": -2, ""planned_duration_days"": 8, ""planned_finish"": ""2025-07-26"", ""planned_start"": ""2025-07-19"", ""project_id"": ""SYN-BLD-001"", ""resource_type"": ""MEP trade crew"", ""synthetic_flag"": ""TRUE"", ""task_id"": ""SYN-BLD-001-T020"", ""task_name"": ""Mechanical and electrical rough-in \u2014 zone D"", ""wbs_code"": ""05.04"", ""work_package"": ""MEP""}","{""as_of_date"": ""2025-04-07"", ""planned_duration_days_in_version"": 8, ""planned_finish_in_version"": ""2025-07-26"", ""planned_start_in_version"": ""2025-07-19"", ""project_id"": ""SYN-BLD-001"", ""revision_reason_synthetic"": ""Original synthetic baseline"", ""synthetic_flag"": ""TRUE"", ""task_id"": ""SYN-BLD-001-T020"", ""version_id"": ""SYN-BLD-001-V0"", ""version_name"": ""baseline""}",2025-07-19,2025-07-26,2025-04-07,10,10,derived_synthetic_computed,reconciliation-v1
SYN-BLD-001,SYN-BLD-001-V0,SYN-BLD-001-T021,Mechanical and electrical rough-in — zone E,2025-08-06,2025-08-14,9,2025-04-07,"{""actual_duration_days_synthetic"": 8, ""actual_finish_synthetic"": ""2025-07-31"", ""actual_start_synthetic"": ""2025-07-24"", ""crew_size_synthetic"": 12, ""delay_days_synthetic"": -1, ""planned_duration_days"": 9, ""planned_finish"": ""2025-08-01"", ""planned_start"": ""2025-07-24"", ""project_id"": ""SYN-BLD-001"", ""resource_type"": ""MEP trade crew"", ""synthetic_flag"": ""TRUE"", ""task_id"": ""SYN-BLD-001-T021"", ""task_name"": ""Mechanical and electrical rough-in \u2014 zone E"", ""wbs_code"": ""05.05"", ""work_package"": ""MEP""}","{""as_of_date"": ""2025-04-07"", ""planned_duration_days_in_version"": 9, ""planned_finish_in_version"": ""2025-08-01"", ""planned_start_in_version"": ""2025-07-24"", ""project_id"": ""SYN-BLD-001"", ""revision_reason_synthetic"": ""Original synthetic baseline"", ""synthetic_flag"": ""TRUE"", ""task_id"": ""SYN-BLD-001-T021"", ""version_id"": ""SYN-BLD-001-V0"", ""version_name"": ""baseline""}",2025-07-24,2025-08-01,2025-04-07,13,13,derived_synthetic_computed,reconciliation-v1
SYN-BLD-001,SYN-BLD-001-V0,SYN-BLD-001-T022,Mechanical and electrical rough-in — zone F,2025-08-15,2025-08-20,6,2025-04-07,"{""actual_duration_days_synthetic"": 7, ""actual_finish_synthetic"": ""2025-08-04"", ""actual_start_synthetic"": ""2025-07-29"", ""crew_size_synthetic"": 13, ""delay_days_synthetic"": 1, ""planned_duration_days"": 6, ""planned_finish"": ""2025-08-03"", ""planned_start"": ""2025-07-29"", ""project_id"": ""SYN-BLD-001"", ""resource_type"": ""MEP trade crew"", ""synthetic_flag"": ""TRUE"", ""task_id"": ""SYN-BLD-001-T022"", ""task_name"": ""Mechanical and electrical rough-in \u2014 zone F"", ""wbs_code"": ""05.06"", ""work_package"": ""MEP""}","{""as_of_date"": ""2025-04-07"", ""planned_duration_days_in_version"": 6, ""planned_finish_in_version"": ""2025-08-03"", ""planned_start_in_version"": ""2025-07-29"", ""project_id"": ""SYN-BLD-001"", ""revision_reason_synthetic"": ""Original synthetic baseline"", ""synthetic_flag"": ""TRUE"", ""task_id"": ""SYN-BLD-001-T022"", ""version_id"": ""SYN-BLD-001-V0"", ""version_name"": ""baseline""}",2025-07-29,2025-08-03,2025-04-07,17,17,derived_synthetic_computed,reconciliation-v1
SYN-BLD-001,SYN-BLD-001-V0,SYN-BLD-001-T023,Partitions and finishes — zone A,2025-08-21,2025-08-26,6,2025-04-07,"{""actual_duration_days_synthetic"": 9, ""actual_finish_synthetic"": ""2025-08-13"", ""actual_start_synthetic"": ""2025-08-05"", ""crew_size_synthetic"": 11, ""delay_days_synthetic"": 3, ""planned_duration_days"": 6, ""planned_finish"": ""2025-08-10"", ""planned_start"": ""2025-08-05"", ""project_id"": ""SYN-BLD-001"", ""resource_type"": ""General contractor crew"", ""synthetic_flag"": ""TRUE"", ""task_id"": ""SYN-BLD-001-T023"", ""task_name"": ""Partitions and finishes \u2014 zone A"", ""wbs_code"": ""06.01"", ""work_package"": ""Interiors""}","{""as_of_date"": ""2025-04-07"", ""planned_duration_days_in_version"": 6, ""planned_finish_in_version"": ""2025-08-10"", ""planned_start_in_version"": ""2025-08-05"", ""project_id"": ""SYN-BLD-001"", ""revision_reason_synthetic"": ""Original synthetic baseline"", ""synthetic_flag"": ""TRUE"", ""task_id"": ""SYN-BLD-001-T023"", ""version_id"": ""SYN-BLD-001-V0"", ""version_name"": ""baseline""}",2025-08-05,2025-08-10,2025-04-07,16,16,derived_synthetic_computed,reconciliation-v1
SYN-BLD-001,SYN-BLD-001-V0,SYN-BLD-001-T024,Partitions and finishes — zone B,2025-08-27,2025-09-01,6,2025-04-07,"{""actual_duration_days_synthetic"": 4, ""actual_finish_synthetic"": ""2025-08-13"", ""actual_start_synthetic"": ""2025-08-10"", ""crew_size_synthetic"": 11, ""delay_days_synthetic"": -2, ""planned_duration_days"": 6, ""planned_finish"": ""2025-08-15"", ""planned_start"": ""2025-08-10"", ""project_id"": ""SYN-BLD-001"", ""resource_type"": ""General contractor crew"", ""synthetic_flag"": ""TRUE"", ""task_id"": ""SYN-BLD-001-T024"", ""task_name"": ""Partitions and finishes \u2014 zone B"", ""wbs_code"": ""06.02"", ""work_package"": ""Interiors""}","{""as_of_date"": ""2025-04-07"", ""planned_duration_days_in_version"": 6, ""planned_finish_in_version"": ""2025-08-15"", ""planned_start_in_version"": ""2025-08-10"", ""project_id"": ""SYN-BLD-001"", ""revision_reason_synthetic"": ""Original synthetic baseline"", ""synthetic_flag"": ""TRUE"", ""task_id"": ""SYN-BLD-001-T024"", ""version_id"": ""SYN-BLD-001-V0"", ""version_name"": ""baseline""}",2025-08-10,2025-08-15,2025-04-07,17,17,derived_synthetic_computed,reconciliation-v1
SYN-BLD-001,SYN-BLD-001-V0,SYN-BLD-001-T025,Partitions and finishes — zone C,2025-09-02,2025-09-07,6,2025-04-07,"{""actual_duration_days_synthetic"": 6, ""actual_finish_synthetic"": ""2025-08-20"", ""actual_start_synthetic"": ""2025-08-15"", ""crew_size_synthetic"": 12, ""delay_days_synthetic"": 0, ""planned_duration_days"": 6, ""planned_finish"": ""2025-08-20"", ""planned_start"": ""2025-08-15"", ""project_id"": ""SYN-BLD-001"", ""resource_type"": ""General contractor crew"", ""synthetic_flag"": ""TRUE"", ""task_id"": ""SYN-BLD-001-T025"", ""task_name"": ""Partitions and finishes \u2014 zone C"", ""wbs_code"": ""06.03"", ""work_package"": ""Interiors""}","{""as_of_date"": ""2025-04-07"", ""planned_duration_days_in_version"": 6, ""planned_finish_in_version"": ""2025-08-20"", ""planned_start_in_version"": ""2025-08-15"", ""project_id"": ""SYN-BLD-001"", ""revision_reason_synthetic"": ""Original synthetic baseline"", ""synthetic_flag"": ""TRUE"", ""task_id"": ""SYN-BLD-001-T025"", ""version_id"": ""SYN-BLD-001-V0"", ""version_name"": ""baseline""}",2025-08-15,2025-08-20,2025-04-07,18,18,derived_synthetic_computed,reconciliation-v1
SYN-BLD-001,SYN-BLD-001-V0,SYN-BLD-001-T026,Partitions and finishes — zone D,2025-09-08,2025-09-13,6,2025-04-07,"{""actual_duration_days_synthetic"": 8, ""actual_finish_synthetic"": ""2025-08-27"", ""actual_start_synthetic"": ""2025-08-20"", ""crew_size_synthetic"": 4, ""delay_days_synthetic"": 2, ""planned_duration_days"": 6, ""planned_finish"": ""2025-08-25"", ""planned_start"": ""2025-08-20"", ""project_id"": ""SYN-BLD-001"", ""resource_type"": ""General contractor crew"", ""synthetic_flag"": ""TRUE"", ""task_id"": ""SYN-BLD-001-T026"", ""task_name"": ""Partitions and finishes \u2014 zone D"", ""wbs_code"": ""06.04"", ""work_package"": ""Interiors""}","{""as_of_date"": ""2025-04-07"", ""planned_duration_days_in_version"": 6, ""planned_finish_in_version"": ""2025-08-25"", ""planned_start_in_version"": ""2025-08-20"", ""project_id"": ""SYN-BLD-001"", ""revision_reason_synthetic"": ""Original synthetic baseline"", ""synthetic_flag"": ""TRUE"", ""task_id"": ""SYN-BLD-001-T026"", ""version_id"": ""SYN-BLD-001-V0"", ""version_name"": ""baseline""}",2025-08-20,2025-08-25,2025-04-07,19,19,derived_synthetic_computed,reconciliation-v1
SYN-BLD-001,SYN-BLD-001-V0,SYN-BLD-001-T027,Partitions and finishes — zone E,2025-09-14,2025-09-19,6,2025-04-07,"{""actual_duration_days_synthetic"": 9, ""actual_finish_synthetic"": ""2025-09-02"", ""actual_start_synthetic"": ""2025-08-25"", ""crew_size_synthetic"": 4, ""delay_days_synthetic"": 3, ""planned_duration_days"": 6, ""planned_finish"": ""2025-08-30"", ""planned_start"": ""2025-08-25"", ""project_id"": ""SYN-BLD-001"", ""resource_type"": ""General contractor crew"", ""synthetic_flag"": ""TRUE"", ""task_id"": ""SYN-BLD-001-T027"", ""task_name"": ""Partitions and finishes \u2014 zone E"", ""wbs_code"": ""06.05"", ""work_package"": ""Interiors""}","{""as_of_date"": ""2025-04-07"", ""planned_duration_days_in_version"": 6, ""planned_finish_in_version"": ""2025-08-30"", ""planned_start_in_version"": ""2025-08-25"", ""project_id"": ""SYN-BLD-001"", ""revision_reason_synthetic"": ""Original synthetic baseline"", ""synthetic_flag"": ""TRUE"", ""task_id"": ""SYN-BLD-001-T027"", ""version_id"": ""SYN-BLD-001-V0"", ""version_name"": ""baseline""}",2025-08-25,2025-08-30,2025-04-07,20,20,derived_synthetic_computed,reconciliation-v1
