project_id,version_id,task_id,task_name,start,finish,duration,as_of_date,source_activity,source_version,original_start,original_finish,anchor,start_shift_days,finish_shift_days,representation,policy
SYN-BRG-001,SYN-BRG-001-V2,SYN-BRG-001-T001,Piling and pile caps — zone A,2025-02-03,2025-02-07,5,2025-04-14,"{""actual_duration_days_synthetic"": 5, ""actual_finish_synthetic"": ""2025-02-07"", ""actual_start_synthetic"": ""2025-02-03"", ""crew_size_synthetic"": 4, ""delay_days_synthetic"": 0, ""planned_duration_days"": 5, ""planned_finish"": ""2025-02-07"", ""planned_start"": ""2025-02-03"", ""project_id"": ""SYN-BRG-001"", ""resource_type"": ""Piling rig and crew"", ""synthetic_flag"": ""TRUE"", ""task_id"": ""SYN-BRG-001-T001"", ""task_name"": ""Piling and pile caps \u2014 zone A"", ""wbs_code"": ""01.01"", ""work_package"": ""Foundations""}","{""as_of_date"": ""2025-04-14"", ""planned_duration_days_in_version"": 5, ""planned_finish_in_version"": ""2025-02-07"", ""planned_start_in_version"": ""2025-02-03"", ""project_id"": ""SYN-BRG-001"", ""revision_reason_synthetic"": ""Synthetic progress-informed forecast update"", ""synthetic_flag"": ""TRUE"", ""task_id"": ""SYN-BRG-001-T001"", ""version_id"": ""SYN-BRG-001-V2"", ""version_name"": ""update_02""}",2025-02-03,2025-02-07,2025-02-03,0,0,derived_synthetic_computed,reconciliation-v1
SYN-BRG-001,SYN-BRG-001-V2,SYN-BRG-001-T002,Piling and pile caps — zone B,2025-02-08,2025-02-14,7,2025-04-14,"{""actual_duration_days_synthetic"": 7, ""actual_finish_synthetic"": ""2025-02-14"", ""actual_start_synthetic"": ""2025-02-08"", ""crew_size_synthetic"": 4, ""delay_days_synthetic"": 2, ""planned_duration_days"": 5, ""planned_finish"": ""2025-02-12"", ""planned_start"": ""2025-02-08"", ""project_id"": ""SYN-BRG-001"", ""resource_type"": ""Piling rig and crew"", ""synthetic_flag"": ""TRUE"", ""task_id"": ""SYN-BRG-001-T002"", ""task_name"": ""Piling and pile caps \u2014 zone B"", ""wbs_code"": ""01.02"", ""work_package"": ""Foundations""}","{""as_of_date"": ""2025-04-14"", ""planned_duration_days_in_version"": 7, ""planned_finish_in_version"": ""2025-02-15"", ""planned_start_in_version"": ""2025-02-09"", ""project_id"": ""SYN-BRG-001"", ""revision_reason_synthetic"": ""Synthetic progress-informed forecast update"", ""synthetic_flag"": ""TRUE"", ""task_id"": ""SYN-BRG-001-T002"", ""version_id"": ""SYN-BRG-001-V2"", ""version_name"": ""update_02""}",2025-02-09,2025-02-15,2025-02-03,-1,-1,derived_synthetic_computed,reconciliation-v1
SYN-BRG-001,SYN-BRG-001-V2,SYN-BRG-001-T003,Piling and pile caps — zone C,2025-02-15,2025-02-17,3,2025-04-14,"{""actual_duration_days_synthetic"": 3, ""actual_finish_synthetic"": ""2025-02-15"", ""actual_start_synthetic"": ""2025-02-13"", ""crew_size_synthetic"": 5, ""delay_days_synthetic"": -2, ""planned_duration_days"": 5, ""planned_finish"": ""2025-02-17"", ""planned_start"": ""2025-02-13"", ""project_id"": ""SYN-BRG-001"", ""resource_type"": ""Piling rig and crew"", ""synthetic_flag"": ""TRUE"", ""task_id"": ""SYN-BRG-001-T003"", ""task_name"": ""Piling and pile caps \u2014 zone C"", ""wbs_code"": ""01.03"", ""work_package"": ""Foundations""}","{""as_of_date"": ""2025-04-14"", ""planned_duration_days_in_version"": 3, ""planned_finish_in_version"": ""2025-02-14"", ""planned_start_in_version"": ""2025-02-12"", ""project_id"": ""SYN-BRG-001"", ""revision_reason_synthetic"": ""Synthetic progress-informed forecast update"", ""synthetic_flag"": ""TRUE"", ""task_id"": ""SYN-BRG-001-T003"", ""version_id"": ""SYN-BRG-001-V2"", ""version_name"": ""update_02""}",2025-02-12,2025-02-14,2025-02-03,3,3,derived_synthetic_computed,reconciliation-v1
SYN-BRG-001,SYN-BRG-001-V2,SYN-BRG-001-T004,Piling and pile caps — zone D,2025-02-18,2025-02-21,4,2025-04-14,"{""actual_duration_days_synthetic"": 4, ""actual_finish_synthetic"": ""2025-02-21"", ""actual_start_synthetic"": ""2025-02-18"", ""crew_size_synthetic"": 5, ""delay_days_synthetic"": -1, ""planned_duration_days"": 5, ""planned_finish"": ""2025-02-22"", ""planned_start"": ""2025-02-18"", ""project_id"": ""SYN-BRG-001"", ""resource_type"": ""Piling rig and crew"", ""synthetic_flag"": ""TRUE"", ""task_id"": ""SYN-BRG-001-T004"", ""task_name"": ""Piling and pile caps \u2014 zone D"", ""wbs_code"": ""01.04"", ""work_package"": ""Foundations""}","{""as_of_date"": ""2025-04-14"", ""planned_duration_days_in_version"": 4, ""planned_finish_in_version"": ""2025-02-21"", ""planned_start_in_version"": ""2025-02-18"", ""project_id"": ""SYN-BRG-001"", ""revision_reason_synthetic"": ""Synthetic progress-informed forecast update"", ""synthetic_flag"": ""TRUE"", ""task_id"": ""SYN-BRG-001-T004"", ""version_id"": ""SYN-BRG-001-V2"", ""version_name"": ""update_02""}",2025-02-18,2025-02-21,2025-02-03,0,0,derived_synthetic_computed,reconciliation-v1
SYN-BRG-001,SYN-BRG-001-V2,SYN-BRG-001-T005,Abutments and piers — zone A,2025-02-22,2025-02-26,5,2025-04-14,"{""actual_duration_days_synthetic"": 5, ""actual_finish_synthetic"": ""2025-03-01"", ""actual_start_synthetic"": ""2025-02-25"", ""crew_size_synthetic"": 5, ""delay_days_synthetic"": 1, ""planned_duration_days"": 4, ""planned_finish"": ""2025-02-28"", ""planned_start"": ""2025-02-25"", ""project_id"": ""SYN-BRG-001"", ""resource_type"": ""Civil crew"", ""synthetic_flag"": ""TRUE"", ""task_id"": ""SYN-BRG-001-T005"", ""task_name"": ""Abutments and piers \u2014 zone A"", ""wbs_code"": ""02.01"", ""work_package"": ""Substructure""}","{""as_of_date"": ""2025-04-14"", ""planned_duration_days_in_version"": 5, ""planned_finish_in_version"": ""2025-03-02"", ""planned_start_in_version"": ""2025-02-26"", ""project_id"": ""SYN-BRG-001"", ""revision_reason_synthetic"": ""Synthetic progress-informed forecast update"", ""synthetic_flag"": ""TRUE"", ""task_id"": ""SYN-BRG-001-T005"", ""version_id"": ""SYN-BRG-001-V2"", ""version_name"": ""update_02""}",2025-02-26,2025-03-02,2025-02-03,-4,-4,derived_synthetic_computed,reconciliation-v1
SYN-BRG-001,SYN-BRG-001-V2,SYN-BRG-001-T006,Abutments and piers — zone B,2025-02-27,2025-03-05,7,2025-04-14,"{""actual_duration_days_synthetic"": 7, ""actual_finish_synthetic"": ""2025-03-09"", ""actual_start_synthetic"": ""2025-03-03"", ""crew_size_synthetic"": 6, ""delay_days_synthetic"": 4, ""planned_duration_days"": 4, ""planned_finish"": ""2025-03-05"", ""planned_start"": ""2025-03-02"", ""project_id"": ""SYN-BRG-001"", ""resource_type"": ""Civil crew"", ""synthetic_flag"": ""TRUE"", ""task_id"": ""SYN-BRG-001-T006"", ""task_name"": ""Abutments and piers \u2014 zone B"", ""wbs_code"": ""02.02"", ""work_package"": ""Substructure""}","{""as_of_date"": ""2025-04-14"", ""planned_duration_days_in_version"": 7, ""planned_finish_in_version"": ""2025-03-10"", ""planned_start_in_version"": ""2025-03-04"", ""project_id"": ""SYN-BRG-001"", ""revision_reason_synthetic"": ""Synthetic progress-informed forecast update"", ""synthetic_flag"": ""TRUE"", ""task_id"": ""SYN-BRG-001-T006"", ""version_id"": ""SYN-BRG-001-V2"", ""version_name"": ""update_02""}",2025-03-04,2025-03-10,2025-02-03,-5,-5,derived_synthetic_computed,reconciliation-v1
SYN-BRG-001,SYN-BRG-001-V2,SYN-BRG-001-T007,Abutments and piers — zone C,2025-03-06,2025-03-07,2,2025-04-14,"{""actual_duration_days_synthetic"": 2, ""actual_finish_synthetic"": ""2025-03-09"", ""actual_start_synthetic"": ""2025-03-08"", ""crew_size_synthetic"": 6, ""delay_days_synthetic"": -1, ""planned_duration_days"": 4, ""planned_finish"": ""2025-03-10"", ""planned_start"": ""2025-03-07"", ""project_id"": ""SYN-BRG-001"", ""resource_type"": ""Civil crew"", ""synthetic_flag"": ""TRUE"", ""task_id"": ""SYN-BRG-001-T007"", ""task_name"": ""Abutments and piers \u2014 zone C"", ""wbs_code"": ""02.03"", ""work_package"": ""Substructure""}","{""as_of_date"": ""2025-04-14"", ""planned_duration_days_in_version"": 2, ""planned_finish_in_version"": ""2025-03-07"", ""planned_start_in_version"": ""2025-03-06"", ""project_id"": ""SYN-BRG-001"", ""revision_reason_synthetic"": ""Synthetic progress-informed forecast update"", ""synthetic_flag"": ""TRUE"", ""task_id"": ""SYN-BRG-001-T007"", ""version_id"": ""SYN-BRG-001-V2"", ""version_name"": ""update_02""}",2025-03-06,2025-03-07,2025-02-03,0,0,derived_synthetic_computed,reconciliation-v1
SYN-BRG-001,SYN-BRG-001-V2,SYN-BRG-001-T008,Bearing installation — zone A,2025-03-08,2025-03-10,3,2025-04-14,"{""actual_duration_days_synthetic"": 3, ""actual_finish_synthetic"": ""2025-03-17"", ""actual_start_synthetic"": ""2025-03-15"", ""crew_size_synthetic"": 6, ""delay_days_synthetic"": 1, ""planned_duration_days"": 3, ""planned_finish"": ""2025-03-16"", ""planned_start"": ""2025-03-14"", ""project_id"": ""SYN-BRG-001"", ""resource_type"": ""Civil crew"", ""synthetic_flag"": ""TRUE"", ""task_id"": ""SYN-BRG-001-T008"", ""task_name"": ""Bearing installation \u2014 zone A"", ""wbs_code"": ""03.01"", ""work_package"": ""Bearings""}","{""as_of_date"": ""2025-04-14"", ""planned_duration_days_in_version"": 3, ""planned_finish_in_version"": ""2025-03-16"", ""planned_start_in_version"": ""2025-03-14"", ""project_id"": ""SYN-BRG-001"", ""revision_reason_synthetic"": ""Synthetic progress-informed forecast update"", ""synthetic_flag"": ""TRUE"", ""task_id"": ""SYN-BRG-001-T008"", ""version_id"": ""SYN-BRG-001-V2"", ""version_name"": ""update_02""}",2025-03-14,2025-03-16,2025-02-03,-6,-6,derived_synthetic_computed,reconciliation-v1
SYN-BRG-001,SYN-BRG-001-V2,SYN-BRG-001-T009,Bearing installation — zone B,2025-03-11,2025-03-15,5,2025-04-14,"{""actual_duration_days_synthetic"": 5, ""actual_finish_synthetic"": ""2025-03-24"", ""actual_start_synthetic"": ""2025-03-20"", ""crew_size_synthetic"": 7, ""delay_days_synthetic"": 3, ""planned_duration_days"": 3, ""planned_finish"": ""2025-03-21"", ""planned_start"": ""2025-03-19"", ""project_id"": ""SYN-BRG-001"", ""resource_type"": ""Civil crew"", ""synthetic_flag"": ""TRUE"", ""task_id"": ""SYN-BRG-001-T009"", ""task_name"": ""Bearing installation \u2014 zone B"", ""wbs_code"": ""03.02"", ""work_package"": ""Bearings""}","{""as_of_date"": ""2025-04-14"", ""planned_duration_days_in_version"": 5, ""planned_finish_in_version"": ""2025-03-24"", ""planned_start_in_version"": ""2025-03-20"", ""project_id"": ""SYN-BRG-001"", ""revision_reason_synthetic"": ""Synthetic progress-informed forecast update"", ""synthetic_flag"": ""TRUE"", ""task_id"": ""SYN-BRG-001-T009"", ""version_id"": ""SYN-BRG-001-V2"", ""version_name"": ""update_02""}",2025-03-20,2025-03-24,2025-02-03,-9,-9,derived_synthetic_computed,reconciliation-v1
SYN-BRG-001,SYN-BRG-001-V2,SYN-BRG-001-T010,Precast beam erection — zone A,2025-03-16,2025-03-17,2,2025-04-14,"{""actual_duration_days_synthetic"": 2, ""actual_finish_synthetic"": ""2025-03-28"", ""actual_start_synthetic"": ""2025-03-27"", ""crew_size_synthetic"": 7, ""delay_days_synthetic"": -2, ""planned_duration_days"": 5, ""planned_finish"": ""2025-03-30"", ""planned_start"": ""2025-03-26"", ""project_id"": ""SYN-BRG-001"", ""resource_type"": ""Mobile crane and erection crew"", ""synthetic_flag"": ""TRUE"", ""task_id"": ""SYN-BRG-001-T010"", ""task_name"": ""Precast beam erection \u2014 zone A"", ""wbs_code"": ""04.01"", ""work_package"": ""Girders""}","{""as_of_date"": ""2025-04-14"", ""planned_duration_days_in_version"": 2, ""planned_finish_in_version"": ""2025-03-26"", ""planned_start_in_version"": ""2025-03-25"", ""project_id"": ""SYN-BRG-001"", ""revision_reason_synthetic"": ""Synthetic progress-informed forecast update"", ""synthetic_flag"": ""TRUE"", ""task_id"": ""SYN-BRG-001-T010"", ""version_id"": ""SYN-BRG-001-V2"", ""version_name"": ""update_02""}",2025-03-25,2025-03-26,2025-02-03,-9,-9,derived_synthetic_computed,reconciliation-v1
SYN-BRG-001,SYN-BRG-001-V2,SYN-BRG-001-T011,Precast beam erection — zone B,2025-03-18,2025-03-21,4,2025-04-14,"{""actual_duration_days_synthetic"": 4, ""actual_finish_synthetic"": ""2025-04-04"", ""actual_start_synthetic"": ""2025-04-01"", ""crew_size_synthetic"": 7, ""delay_days_synthetic"": 0, ""planned_duration_days"": 5, ""planned_finish"": ""2025-04-04"", ""planned_start"": ""2025-03-31"", ""project_id"": ""SYN-BRG-001"", ""resource_type"": ""Mobile crane and erection crew"", ""synthetic_flag"": ""TRUE"", ""task_id"": ""SYN-BRG-001-T011"", ""task_name"": ""Precast beam erection \u2014 zone B"", ""wbs_code"": ""04.02"", ""work_package"": ""Girders""}","{""as_of_date"": ""2025-04-14"", ""planned_duration_days_in_version"": 4, ""planned_finish_in_version"": ""2025-04-03"", ""planned_start_in_version"": ""2025-03-31"", ""project_id"": ""SYN-BRG-001"", ""revision_reason_synthetic"": ""Synthetic progress-informed forecast update"", ""synthetic_flag"": ""TRUE"", ""task_id"": ""SYN-BRG-001-T011"", ""version_id"": ""SYN-BRG-001-V2"", ""version_name"": ""update_02""}",2025-03-31,2025-04-03,2025-02-03,-13,-13,derived_synthetic_computed,reconciliation-v1
SYN-BRG-001,SYN-BRG-001-V2,SYN-BRG-001-T012,Precast beam erection — zone C,2025-03-22,2025-03-28,7,2025-04-14,"{""actual_duration_days_synthetic"": 7, ""actual_finish_synthetic"": ""2025-04-10"", ""actual_start_synthetic"": ""2025-04-04"", ""crew_size_synthetic"": 8, ""delay_days_synthetic"": 0, ""planned_duration_days"": 6, ""planned_finish"": ""2025-04-10"", ""planned_start"": ""2025-04-05"", ""project_id"": ""SYN-BRG-001"", ""resource_type"": ""Mobile crane and erection crew"", ""synthetic_flag"": ""TRUE"", ""task_id"": ""SYN-BRG-001-T012"", ""task_name"": ""Precast beam erection \u2014 zone C"", ""wbs_code"": ""04.03"", ""work_package"": ""Girders""}","{""as_of_date"": ""2025-04-14"", ""planned_duration_days_in_version"": 7, ""planned_finish_in_version"": ""2025-04-12"", ""planned_start_in_version"": ""2025-04-06"", ""project_id"": ""SYN-BRG-001"", ""revision_reason_synthetic"": ""Synthetic progress-informed forecast update"", ""synthetic_flag"": ""TRUE"", ""task_id"": ""SYN-BRG-001-T012"", ""version_id"": ""SYN-BRG-001-V2"", ""version_name"": ""update_02""}",2025-04-06,2025-04-12,2025-02-03,-15,-15,derived_synthetic_computed,reconciliation-v1
SYN-BRG-001,SYN-BRG-001-V2,SYN-BRG-001-T013,Precast beam erection — zone D,2025-03-29,2025-04-06,9,2025-04-14,"{""actual_duration_days_synthetic"": 9, ""actual_finish_synthetic"": ""2025-04-17"", ""actual_start_synthetic"": ""2025-04-09"", ""crew_size_synthetic"": 8, ""delay_days_synthetic"": 2, ""planned_duration_days"": 6, ""planned_finish"": ""2025-04-15"", ""planned_start"": ""2025-04-10"", ""project_id"": ""SYN-BRG-001"", ""resource_type"": ""Mobile crane and erection crew"", ""synthetic_flag"": ""TRUE"", ""task_id"": ""SYN-BRG-001-T013"", ""task_name"": ""Precast beam erection \u2014 zone D"", ""wbs_code"": ""04.04"", ""work_package"": ""Girders""}","{""as_of_date"": ""2025-04-14"", ""planned_duration_days_in_version"": 9, ""planned_finish_in_version"": ""2025-04-20"", ""planned_start_in_version"": ""2025-04-12"", ""project_id"": ""SYN-BRG-001"", ""revision_reason_synthetic"": ""Synthetic progress-informed forecast update"", ""synthetic_flag"": ""TRUE"", ""task_id"": ""SYN-BRG-001-T013"", ""version_id"": ""SYN-BRG-001-V2"", ""version_name"": ""update_02""}",2025-04-12,2025-04-20,2025-02-03,-14,-14,derived_synthetic_computed,reconciliation-v1
SYN-BRG-001,SYN-BRG-001-V2,SYN-BRG-001-T014,Precast beam erection — zone E,2025-04-07,2025-04-10,4,2025-04-14,"{""actual_duration_days_synthetic"": 4, ""actual_finish_synthetic"": ""2025-04-17"", ""actual_start_synthetic"": ""2025-04-14"", ""crew_size_synthetic"": 8, ""delay_days_synthetic"": -3, ""planned_duration_days"": 6, ""planned_finish"": ""2025-04-20"", ""planned_start"": ""2025-04-15"", ""project_id"": ""SYN-BRG-001"", ""resource_type"": ""Mobile crane and erection crew"", ""synthetic_flag"": ""TRUE"", ""task_id"": ""SYN-BRG-001-T014"", ""task_name"": ""Precast beam erection \u2014 zone E"", ""wbs_code"": ""04.05"", ""work_package"": ""Girders""}","{""as_of_date"": ""2025-04-14"", ""planned_duration_days_in_version"": 4, ""planned_finish_in_version"": ""2025-04-17"", ""planned_start_in_version"": ""2025-04-14"", ""project_id"": ""SYN-BRG-001"", ""revision_reason_synthetic"": ""Synthetic progress-informed forecast update"", ""synthetic_flag"": ""TRUE"", ""task_id"": ""SYN-BRG-001-T014"", ""version_id"": ""SYN-BRG-001-V2"", ""version_name"": ""update_02""}",2025-04-14,2025-04-17,2025-02-03,-7,-7,derived_synthetic_computed,reconciliation-v1
SYN-BRG-001,SYN-BRG-001-V2,SYN-BRG-001-T015,Deck formwork and pour — zone A,2025-04-11,2025-04-15,5,2025-04-14,"{""actual_duration_days_synthetic"": 5, ""actual_finish_synthetic"": ""2025-04-25"", ""actual_start_synthetic"": ""2025-04-21"", ""crew_size_synthetic"": 9, ""delay_days_synthetic"": -1, ""planned_duration_days"": 5, ""planned_finish"": ""2025-04-26"", ""planned_start"": ""2025-04-22"", ""project_id"": ""SYN-BRG-001"", ""resource_type"": ""Civil crew"", ""synthetic_flag"": ""TRUE"", ""task_id"": ""SYN-BRG-001-T015"", ""task_name"": ""Deck formwork and pour \u2014 zone A"", ""wbs_code"": ""05.01"", ""work_package"": ""Deck""}","{""as_of_date"": ""2025-04-14"", ""planned_duration_days_in_version"": 5, ""planned_finish_in_version"": ""2025-04-26"", ""planned_start_in_version"": ""2025-04-22"", ""project_id"": ""SYN-BRG-001"", ""revision_reason_synthetic"": ""Synthetic progress-informed forecast update"", ""synthetic_flag"": ""TRUE"", ""task_id"": ""SYN-BRG-001-T015"", ""version_id"": ""SYN-BRG-001-V2"", ""version_name"": ""update_02""}",2025-04-22,2025-04-26,2025-02-03,-11,-11,derived_synthetic_computed,reconciliation-v1
SYN-BRG-001,SYN-BRG-001-V2,SYN-BRG-001-T016,Deck formwork and pour — zone B,2025-04-16,2025-04-22,7,2025-04-14,"{""actual_duration_days_synthetic"": 7, ""actual_finish_synthetic"": ""2025-05-02"", ""actual_start_synthetic"": ""2025-04-26"", ""crew_size_synthetic"": 9, ""delay_days_synthetic"": 1, ""planned_duration_days"": 5, ""planned_finish"": ""2025-05-01"", ""planned_start"": ""2025-04-27"", ""project_id"": ""SYN-BRG-001"", ""resource_type"": ""Civil crew"", ""synthetic_flag"": ""TRUE"", ""task_id"": ""SYN-BRG-001-T016"", ""task_name"": ""Deck formwork and pour \u2014 zone B"", ""wbs_code"": ""05.02"", ""work_package"": ""Deck""}","{""as_of_date"": ""2025-04-14"", ""planned_duration_days_in_version"": 7, ""planned_finish_in_version"": ""2025-05-04"", ""planned_start_in_version"": ""2025-04-28"", ""project_id"": ""SYN-BRG-001"", ""revision_reason_synthetic"": ""Synthetic progress-informed forecast update"", ""synthetic_flag"": ""TRUE"", ""task_id"": ""SYN-BRG-001-T016"", ""version_id"": ""SYN-BRG-001-V2"", ""version_name"": ""update_02""}",2025-04-28,2025-05-04,2025-02-03,-12,-12,derived_synthetic_computed,reconciliation-v1
SYN-BRG-001,SYN-BRG-001-V2,SYN-BRG-001-T017,Deck formwork and pour — zone C,2025-04-23,2025-04-30,8,2025-04-14,"{""actual_duration_days_synthetic"": 8, ""actual_finish_synthetic"": ""2025-05-08"", ""actual_start_synthetic"": ""2025-05-01"", ""crew_size_synthetic"": 9, ""delay_days_synthetic"": 2, ""planned_duration_days"": 5, ""planned_finish"": ""2025-05-06"", ""planned_start"": ""2025-05-02"", ""project_id"": ""SYN-BRG-001"", ""resource_type"": ""Civil crew"", ""synthetic_flag"": ""TRUE"", ""task_id"": ""SYN-BRG-001-T017"", ""task_name"": ""Deck formwork and pour \u2014 zone C"", ""wbs_code"": ""05.03"", ""work_package"": ""Deck""}","{""as_of_date"": ""2025-04-14"", ""planned_duration_days_in_version"": 8, ""planned_finish_in_version"": ""2025-05-11"", ""planned_start_in_version"": ""2025-05-04"", ""project_id"": ""SYN-BRG-001"", ""revision_reason_synthetic"": ""Synthetic progress-informed forecast update"", ""synthetic_flag"": ""TRUE"", ""task_id"": ""SYN-BRG-001-T017"", ""version_id"": ""SYN-BRG-001-V2"", ""version_name"": ""update_02""}",2025-05-04,2025-05-11,2025-02-03,-11,-11,derived_synthetic_computed,reconciliation-v1
SYN-BRG-001,SYN-BRG-001-V2,SYN-BRG-001-T018,Parapets and barriers — zone A,2025-05-01,2025-05-04,4,2025-04-14,"{""actual_duration_days_synthetic"": 4, ""actual_finish_synthetic"": ""2025-05-11"", ""actual_start_synthetic"": ""2025-05-08"", ""crew_size_synthetic"": 9, ""delay_days_synthetic"": -2, ""planned_duration_days"": 5, ""planned_finish"": ""2025-05-13"", ""planned_start"": ""2025-05-09"", ""project_id"": ""SYN-BRG-001"", ""resource_type"": ""Civil crew"", ""synthetic_flag"": ""TRUE"", ""task_id"": ""SYN-BRG-001-T018"", ""task_name"": ""Parapets and barriers \u2014 zone A"", ""wbs_code"": ""06.01"", ""work_package"": ""Finishes""}","{""as_of_date"": ""2025-04-14"", ""planned_duration_days_in_version"": 4, ""planned_finish_in_version"": ""2025-05-12"", ""planned_start_in_version"": ""2025-05-09"", ""project_id"": ""SYN-BRG-001"", ""revision_reason_synthetic"": ""Synthetic progress-informed forecast update"", ""synthetic_flag"": ""TRUE"", ""task_id"": ""SYN-BRG-001-T018"", ""version_id"": ""SYN-BRG-001-V2"", ""version_name"": ""update_02""}",2025-05-09,2025-05-12,2025-02-03,-8,-8,derived_synthetic_computed,reconciliation-v1
SYN-BRG-001,SYN-BRG-001-V2,SYN-BRG-001-T019,Parapets and barriers — zone B,2025-05-05,2025-05-10,6,2025-04-14,"{""actual_duration_days_synthetic"": 6, ""actual_finish_synthetic"": ""2025-05-19"", ""actual_start_synthetic"": ""2025-05-14"", ""crew_size_synthetic"": 10, ""delay_days_synthetic"": 1, ""planned_duration_days"": 5, ""planned_finish"": ""2025-05-18"", ""planned_start"": ""2025-05-14"", ""project_id"": ""SYN-BRG-001"", ""resource_type"": ""Civil crew"", ""synthetic_flag"": ""TRUE"", ""task_id"": ""SYN-BRG-001-T019"", ""task_name"": ""Parapets and barriers \u2014 zone B"", ""wbs_code"": ""06.02"", ""work_package"": ""Finishes""}","{""as_of_date"": ""2025-04-14"", ""planned_duration_days_in_version"": 6, ""planned_finish_in_version"": ""2025-05-20"", ""planned_start_in_version"": ""2025-05-15"", ""project_id"": ""SYN-BRG-001"", ""revision_reason_synthetic"": ""Synthetic progress-informed forecast update"", ""synthetic_flag"": ""TRUE"", ""task_id"": ""SYN-BRG-001-T019"", ""version_id"": ""SYN-BRG-001-V2"", ""version_name"": ""update_02""}",2025-05-15,2025-05-20,2025-02-03,-10,-10,derived_synthetic_computed,reconciliation-v1
SYN-BRG-001,SYN-BRG-001-V2,SYN-BRG-001-T020,Parapets and barriers — zone C,2025-05-11,2025-05-15,5,2025-04-14,"{""actual_duration_days_synthetic"": 5, ""actual_finish_synthetic"": ""2025-05-23"", ""actual_start_synthetic"": ""2025-05-19"", ""crew_size_synthetic"": 10, ""delay_days_synthetic"": 2, ""planned_duration_days"": 3, ""planned_finish"": ""2025-05-21"", ""planned_start"": ""2025-05-19"", ""project_id"": ""SYN-BRG-001"", ""resource_type"": ""Civil crew"", ""synthetic_flag"": ""TRUE"", ""task_id"": ""SYN-BRG-001-T020"", ""task_name"": ""Parapets and barriers \u2014 zone C"", ""wbs_code"": ""06.03"", ""work_package"": ""Finishes""}","{""as_of_date"": ""2025-04-14"", ""planned_duration_days_in_version"": 5, ""planned_finish_in_version"": ""2025-05-24"", ""planned_start_in_version"": ""2025-05-20"", ""project_id"": ""SYN-BRG-001"", ""revision_reason_synthetic"": ""Synthetic progress-informed forecast update"", ""synthetic_flag"": ""TRUE"", ""task_id"": ""SYN-BRG-001-T020"", ""version_id"": ""SYN-BRG-001-V2"", ""version_name"": ""update_02""}",2025-05-20,2025-05-24,2025-02-03,-9,-9,derived_synthetic_computed,reconciliation-v1
